# amjr2

Schedule from MS Project, 2023-10-06 to 2023-12-14, status date 2023-11-19, costs in €, A marks actual dates.

## Calendars

- Calendario-Sevilla: Mon-Fri 09:00-14:00, 16:00-19:00; Sat-Sun off. Exceptions (off unless hours are given): 2023-11-01 (Festividad de Todos los Santos), 2023-12-06 (Día de la Constitución), 2023-12-08 (Festividad de la Inmaculada Concepción).

## Resources

| Resource | Rate |
| --- | --- |
| Portátiles |  |
| Visual Studio Code |  |
| Discord |  |
| GitHub |  |
| MS Project License |  |
| Python |  |
| Django |  |
| Google Drive |  |
| Director de proyecto | 41.17 |
| Ana Lucía | 24.1 |
| Carlos | 24.1 |
| Álvaro | 24.1 |
| Manuel | 24.1 |
| Alonso | 24.1 |

## Schedule

| ID | WBS | Task | Type | Duration | Start | Finish | Predecessors | Complete | Remaining | Actual finish | Baseline start | Baseline finish | Baseline duration | Constraint | Resources | Work | Actual work | Cost | Baseline cost | Actual cost | ID EDT |
| --- | --- | --- | --- | --- | --- | --- | --- | --- | --- | --- | --- | --- | --- | --- | --- | --- | --- | --- | --- | --- | --- |
| 1 | 1 | **Plan de Proyecto** |  | 25d | 2023-10-06 09:00 A | 2023-11-10 19:00 |  | 100% |  | 2023-11-10 09:00 | 2023-10-06 09:00 | 2023-11-10 19:00 | 25d |  |  | 220h | 220h | 1,811.48 | 1,811.48 | 1,811.48 | 0.X |
| 2 | 1.1 | Elaborar Acta de Constitución | manual | 3h | 2023-10-06 09:00 A | 2023-10-06 12:00 A |  | 100% |  |  | 2023-10-06 09:00 | 2023-10-06 12:00 | 3h | start no earlier than 2023-10-06 09:00 | Portátiles; Discord; GitHub; Google Drive; Director de proyecto | 15h | 15h | 123.51 | 123.51 | 123.51 | 0.0.1 |
| 3 | 1.2 | Elaborar Registro de Supuestos | manual | 1.5h | 2023-10-10 09:00 A | 2023-10-10 10:30 A |  | 100% |  |  | 2023-10-10 09:00 | 2023-10-10 10:30 | 1.5h | start no earlier than 2023-10-10 09:00 | Portátiles; Discord; GitHub; Google Drive; Director de proyecto | 7.5h | 7.5h | 61.76 | 61.76 | 61.76 | 0.0.2 |
| 4 | 1.3 | Elaborar Registro de Interesados | manual | 1.5h | 2023-10-09 17:30 A | 2023-10-09 19:00 A |  | 100% |  |  | 2023-10-09 17:30 | 2023-10-09 19:00 | 1.5h | finish no earlier than 2023-10-09 19:00 | Portátiles; Discord; GitHub; Google Drive; Director de proyecto | 7.5h | 7.5h | 61.76 | 61.76 | 61.76 | 0.0.3 |
| 5 | 1.4 | Elaborar Plan de Dirección de Proyecto | manual | 2h | 2023-10-10 10:30 A | 2023-10-10 12:30 A | 2, 3, 4 | 100% |  |  | 2023-10-10 10:30 | 2023-10-10 12:30 | 2h |  | Portátiles; Discord; GitHub; Google Drive; Director de proyecto | 10h | 10h | 82.34 | 82.34 | 82.34 | 0.1.1 |
| 6 | 1.5 | Elaborar Planes de Gestión | manual | 20h | 2023-10-16 13:00 A | 2023-10-18 19:00 A | 2, 3, 4 | 100% |  |  | 2023-10-16 13:00 | 2023-10-18 19:00 | 20h | finish no earlier than 2023-10-18 19:00 | Portátiles; Discord; GitHub; Google Drive; Director de proyecto | 100h | 100h | 823.4 | 823.4 | 823.4 | 0.1.2 |
| 7 | 1.6 | Diseñar Líneas Base | manual | 10h | 2023-10-16 09:00 A | 2023-10-17 11:00 A | 2, 3, 4 | 100% |  |  | 2023-10-16 09:00 | 2023-10-17 11:00 | 10h | start no earlier than 2023-10-16 09:00 | Portátiles; Discord; GitHub; Google Drive; Director de proyecto | 50h | 50h | 411.7 | 411.7 | 411.7 | 0.1.3 |
| 8 | 1.7 | Realizar Estimaciones | manual | 3h | 2023-10-16 09:00 A | 2023-10-16 12:00 A | 2, 3, 4 | 100% |  |  | 2023-10-16 09:00 | 2023-10-16 12:00 | 3h | start no earlier than 2023-10-16 09:00 | Portátiles; Discord; GitHub; Google Drive; Director de proyecto | 15h | 15h | 123.51 | 123.51 | 123.51 | 0.1.4 |
| 9 | 1.8 | Realizar Registros | manual | 3h | 2023-10-23 09:00 A | 2023-10-23 12:00 A | 6 | 100% |  |  | 2023-10-23 09:00 | 2023-10-23 12:00 | 3h | start no earlier than 2023-10-23 09:00 | Portátiles; Discord; GitHub; Google Drive; Director de proyecto | 15h | 15h | 123.51 | 123.51 | 123.51 | 0.1.5 |
| 10 | 1.9 | Entrega Plan de Proyecto | milestone, manual | 0d | 2023-11-10 09:00 A | 2023-11-10 09:00 A |  | 100% |  |  |  |  |  | start no earlier than 2023-11-10 09:00 |  |  |  |  |  |  |  |
| 11 | 2 | **Iteración 1** |  | 6d | 2023-11-16 09:00 A | 2023-11-23 19:00 | 1 | 26% | 4.41d |  | 2023-11-13 09:00 | 2023-11-20 19:00 | 6d |  |  | 120h | 31.75h | 1,446 | 1,446 | 382.59 | 1.X |
| 12 | 2.1 | Gestión de usuarios | manual | 1.5h | 2023-11-16 09:00 A | 2023-11-16 10:30 |  | 50% | 0.75h |  | 2023-11-13 09:00 | 2023-11-13 10:30 | 1.5h | start no earlier than 2023-11-16 09:00 | Portátiles; Discord; GitHub; Google Drive; Python; Alonso; Álvaro; Ana Lucía; Carlos; Manuel | 15h | 7.5h | 180.75 | 180.75 | 90.38 | 1.0.1 |
| 13 | 2.2 | UX | manual | 1h | 2023-11-16 09:00 A | 2023-11-16 10:00 |  | 17% | 0.83h |  | 2023-11-14 09:00 | 2023-11-14 10:00 | 1h |  | Portátiles; Discord; GitHub; Google Drive; Python; Alonso; Álvaro; Ana Lucía; Carlos; Manuel | 10h | 1.7h | 120.5 | 120.5 | 20.48 | 1.0.2 |
| 14 | 2.3 | Cesta de la compra | manual | 1.5h | 2023-11-16 09:00 A | 2023-11-16 11:44 | 15 | 17% | 1.25h |  | 2023-11-14 09:00 | 2023-11-14 10:30 | 1.5h |  | Portátiles; Discord; GitHub; Google Drive; Python; Alonso; Álvaro; Ana Lucía; Carlos; Manuel | 15h | 2.55h | 180.75 | 180.75 | 30.73 | 1.0.3 |
| 15 | 2.4 | Catálogo de productos (I) | manual | 1.5h | 2023-11-16 09:00 A | 2023-11-16 10:30 |  | 50% | 0.75h |  | 2023-11-15 09:00 | 2023-11-15 10:30 | 1.5h |  | Portátiles; Discord; GitHub; Google Drive; Python; Alonso; Álvaro; Ana Lucía; Carlos; Manuel | 15h | 7.5h | 180.75 | 180.75 | 90.38 | 1.0.4 |
| 16 | 2.5 | Gestión de fichas | manual | 1.5h | 2023-11-16 09:00 A | 2023-11-16 11:15 | 15 | 50% | 0.75h |  | 2023-11-15 09:00 | 2023-11-15 10:30 | 1.5h |  | Portátiles; Discord; GitHub; Google Drive; Python; Alonso; Álvaro; Ana Lucía; Carlos; Manuel | 15h | 7.5h | 180.75 | 180.75 | 90.38 | 1.0.5 |
| 17 | 2.6 | Funcionalidad de administrador (I) | manual | 1h | 2023-11-16 09:00 A | 2023-11-16 11:00 | 15 | 50% | 0.5h |  | 2023-11-16 09:00 | 2023-11-16 10:00 | 1h |  | Portátiles; Discord; GitHub; Google Drive; Python; Alonso; Álvaro; Ana Lucía; Carlos; Manuel | 10h | 5h | 120.5 | 120.5 | 60.25 | 1.0.6 |
| 18 | 2.7 | Testeo de los requisitos del entregable 1 | manual | 4h | 2023-11-19 09:00 | 2023-11-19 13:00 | 13, 14, 15, 16, 17 |  |  |  | 2023-11-17 09:00 | 2023-11-17 13:00 | 4h | start no earlier than 2023-11-19 09:00 | Portátiles; Discord; GitHub; Google Drive; Python; Alonso; Álvaro; Ana Lucía; Carlos; Manuel | 40h |  | 482 | 482 |  | 1.0.7 |
| 19 | 3 | **Iteración 2** |  | 6d | 2023-11-20 09:00 | 2023-11-27 19:00 | 11 |  |  |  | 2023-11-20 09:00 | 2023-11-27 19:00 | 6d |  |  | 100h |  | 1,205 | 1,205 |  | 2.X |
| 20 | 3.1 | Gestión de búsqueda | manual | 2.5h | 2023-11-20 09:00 | 2023-11-20 11:30 |  |  |  |  | 2023-11-20 09:00 | 2023-11-20 11:30 | 2.5h | start no earlier than 2023-11-20 09:00 | Discord; GitHub; Python; Alonso; Álvaro; Ana Lucía; Carlos; Manuel; Google Drive; Portátiles | 25h |  | 301.25 | 301.25 |  | 2.0.1 |
| 21 | 3.2 | Catálogo de productos (II) | manual | 1h | 2023-11-20 09:00 | 2023-11-20 10:00 | 15 |  |  |  | 2023-11-20 09:00 | 2023-11-20 10:00 | 1h | start no earlier than 2023-11-20 09:00 | GitHub; Python; Alonso; Álvaro; Ana Lucía; Carlos; Manuel; Portátiles; Google Drive; Discord | 10h |  | 120.5 | 120.5 |  | 2.0.2 |
| 22 | 3.3 | Gestión de pagos | manual | 2.5h | 2023-11-21 09:00 | 2023-11-21 11:30 | 14 |  |  |  | 2023-11-21 09:00 | 2023-11-21 11:30 | 2.5h |  | Discord; GitHub; Google Drive; Python; Alonso; Álvaro; Ana Lucía; Carlos; Manuel; Portátiles | 25h |  | 301.25 | 301.25 |  | 2.0.3 |
| 23 | 3.4 | Funcionalidad de administrador (II) | manual | 1.5h | 2023-11-22 09:00 | 2023-11-22 10:30 | 17 |  |  |  | 2023-11-22 09:00 | 2023-11-22 10:30 | 1.5h | start no earlier than 2023-11-22 09:00 | Discord; GitHub; Python; Alonso; Álvaro; Ana Lucía; Carlos; Manuel; Google Drive; Portátiles | 15h |  | 180.75 | 180.75 |  | 2.0.4 |
| 24 | 3.5 | Opinión del cliente | manual | 1.5h | 2023-11-23 09:00 | 2023-11-23 10:30 | 16 |  |  |  | 2023-11-23 09:00 | 2023-11-23 10:30 | 1.5h |  | Discord; GitHub; Google Drive; Python; Alonso; Álvaro; Ana Lucía; Carlos; Manuel; Portátiles | 15h |  | 180.75 | 180.75 |  | 2.0.5 |
| 25 | 3.6 | Testeo de los requisitos del entregable 2 | manual | 1h | 2023-11-24 09:00 | 2023-11-24 10:00 | 20, 21, 22, 23, 24 |  |  |  | 2023-11-24 09:00 | 2023-11-24 10:00 | 1h | start no earlier than 2023-11-24 09:00 | Discord; GitHub; Python; Alonso; Álvaro; Ana Lucía; Carlos; Manuel; Portátiles; Google Drive | 10h |  | 120.5 | 120.5 |  | 2.0.6 |

| ID | WBS | Task | Type | Duration | Start | Finish | Predecessors | Complete | Remaining | Baseline start | Baseline finish | Baseline duration | Constraint | Resources | Work | Actual work | Cost | Baseline cost | Actual cost | ID EDT |
| --- | --- | --- | --- | --- | --- | --- | --- | --- | --- | --- | --- | --- | --- | --- | --- | --- | --- | --- | --- | --- |
| 26 | 4 | **Iteración 3** |  | 6d | 2023-11-27 09:00 | 2023-12-04 19:00 | 19 |  |  | 2023-11-27 09:00 | 2023-12-04 19:00 | 6d |  |  | 80h |  | 964 | 964 |  | 3.X |
| 27 | 4.1 | Seguimiento de pedidos | manual | 2.5h | 2023-11-27 09:00 | 2023-11-27 11:30 | 12 |  |  | 2023-11-27 09:00 | 2023-11-27 11:30 | 2.5h | start no earlier than 2023-11-27 09:00 | Discord; GitHub; Python; Alonso; Álvaro; Ana Lucía; Carlos; Manuel; Portátiles; Google Drive | 25h |  | 301.25 | 301.25 |  | 3.0.1 |
| 28 | 4.2 | Gestión de ventas y reclamaciones | manual | 2.5h | 2023-11-28 09:00 | 2023-11-28 11:30 |  |  |  | 2023-11-28 09:00 | 2023-11-28 11:30 | 2.5h | start no earlier than 2023-11-28 09:00 | Discord; GitHub; Python; Alonso; Álvaro; Ana Lucía; Carlos; Manuel; Portátiles; Google Drive | 25h |  | 301.25 | 301.25 |  | 3.0.2 |
| 29 | 4.3 | Despliegue | manual | 2h | 2023-11-29 09:00 | 2023-11-29 11:00 | 11, 19, 27, 28 |  |  | 2023-11-29 09:00 | 2023-11-29 11:00 | 2h | start no earlier than 2023-11-29 09:00 | Discord; GitHub; Python; Alonso; Álvaro; Ana Lucía; Carlos; Manuel; Portátiles; Google Drive | 20h |  | 241 | 241 |  | 3.0.3 |
| 30 | 4.4 | Testeo de los requisitos del entregable 3 | manual | 1h | 2023-11-30 09:00 | 2023-11-30 10:00 | 27, 28 |  |  | 2023-11-30 09:00 | 2023-11-30 10:00 | 1h | start no earlier than 2023-11-30 09:00 | Discord; GitHub; Python; Alonso; Álvaro; Ana Lucía; Carlos; Manuel; Portátiles; Google Drive | 10h |  | 120.5 | 120.5 |  | 3.0.4 |
| 31 | 5 | **Informe Técnico** |  | 16d | 2023-11-13 09:00 A | 2023-12-04 19:00 |  | 33% | 10.67d | 2023-11-13 09:00 | 2023-12-04 19:00 | 16d |  |  | 30h | 10h | 247.02 | 247.02 | 82.34 | 4.X |
| 32 | 5.1 | Análisis de la situación del proyecto | manual | 2h | 2023-11-13 09:00 A | 2023-11-13 11:00 A | 11, 19, 26 | 100% |  | 2023-11-13 09:00 | 2023-11-13 11:00 | 2h | start no earlier than 2023-11-13 09:00 | Discord; GitHub; Google Drive; Portátiles; Director de proyecto | 10h | 10h | 82.34 | 82.34 | 82.34 | 4.0.1 |
| 33 | 5.2 | Detección de riesgos y problemas en la aplicación | manual | 2h | 2023-11-27 09:00 | 2023-11-27 11:00 | 11, 19, 26 |  |  | 2023-11-27 09:00 | 2023-11-27 11:00 | 2h | start no earlier than 2023-11-27 09:00 | Discord; GitHub; Google Drive; Portátiles; Director de proyecto | 10h |  | 82.34 | 82.34 |  | 4.0.2 |
| 34 | 5.3 | Previsión de correcciones | manual | 2h | 2023-11-30 09:00 | 2023-11-30 11:00 | 11, 19, 26 |  |  | 2023-11-30 09:00 | 2023-11-30 11:00 | 2h | start no earlier than 2023-11-30 09:00 | Discord; GitHub; Google Drive; Portátiles; Director de proyecto | 10h |  | 82.34 | 82.34 |  | 4.0.3 |
| 35 | 6 | **Prototipo** |  | 6d | 2023-11-27 09:00 | 2023-12-04 19:00 |  |  |  | 2023-11-27 09:00 | 2023-12-04 19:00 | 6d |  |  | 44h |  | 483.5 | 483.5 |  | 5.X |
| 36 | 6.1 | Elaborar el prototipo de la aplicación | manual | 2h | 2023-11-27 09:00 | 2023-11-27 11:00 | 29 |  |  | 2023-11-27 09:00 | 2023-11-27 11:00 | 2h | start no earlier than 2023-11-27 09:00 | Discord; GitHub; Python; Alonso; Álvaro; Ana Lucía; Carlos; Manuel; Django; Portátiles | 20h |  | 241 | 241 |  | 5.0.1 |
| 37 | 6.2 | Testeo prototipo | manual | 1.5h | 2023-11-28 09:00 | 2023-11-28 10:30 | 36 |  |  | 2023-11-28 09:00 | 2023-11-28 10:30 | 1.5h | start no earlier than 2023-11-28 09:00 | Discord; GitHub; Python; Alonso; Álvaro; Ana Lucía; Carlos; Manuel; Django; Portátiles | 15h |  | 180.75 | 180.75 |  | 5.0.2 |
| 38 | 6.3 | Testeo requisitos prototipo | manual | 1.5h | 2023-11-29 09:00 | 2023-11-29 10:30 | 36 |  |  | 2023-11-29 09:00 | 2023-11-29 10:30 | 1.5h | start no earlier than 2023-11-29 09:00 | Discord; GitHub; Python; Django; Director de proyecto; Portátiles | 9h |  | 61.76 | 61.76 |  | 5.0.3 |
| 39 | 6.4 | Entrega de planes de Seguimiento y Control | milestone, manual | 0d | 2023-12-04 09:00 | 2023-12-04 09:00 |  |  |  |  |  |  |  |  |  |  |  |  |  |  |
| 40 | 6.5 | Entrega del prototipo de la aplicación | milestone, manual | 0d | 2023-12-04 09:00 | 2023-12-04 09:00 |  |  |  |  |  |  | start no earlier than 2023-12-04 09:00 |  |  |  |  |  |  |  |
| 41 | 7 | **Producto final** |  | 6d | 2023-12-04 09:00 | 2023-12-13 19:00 | 35 |  |  | 2023-12-04 09:00 | 2023-12-13 19:00 | 6d |  |  | 30h |  | 205.85 | 205.85 |  | 6.X |
| 42 | 7.1 | Elaborar el producto final de la aplicación | manual | 2h | 2023-12-04 09:00 | 2023-12-04 11:00 | 38 |  |  | 2023-12-04 09:00 | 2023-12-04 11:00 | 2h | start no earlier than 2023-12-04 09:00 | Discord; GitHub; Director de proyecto; Python; Django; Portátiles | 12h |  | 82.34 | 82.34 |  | 6.0.1 |
| 43 | 7.2 | Testeo producto final | manual | 1.5h | 2023-12-07 09:00 | 2023-12-07 10:30 | 42 |  |  | 2023-12-07 09:00 | 2023-12-07 10:30 | 1.5h | start no earlier than 2023-12-07 09:00 | Discord; GitHub; Director de proyecto; Python; Django; Portátiles | 9h |  | 61.76 | 61.76 |  | 6.0.2 |
| 44 | 7.3 | Testeo requisitos producto final | manual | 1.5h | 2023-12-08 09:00 | 2023-12-08 10:30 | 42 |  |  | 2023-12-08 09:00 | 2023-12-08 10:30 | 1.5h | start no earlier than 2023-12-08 09:00 | Discord; GitHub; Director de proyecto; Python; Django; Portátiles | 9h |  | 61.76 | 61.76 |  | 6.0.3 |
| 45 | 8 | **Informe de Cierre** |  | 6d | 2023-12-04 09:00 | 2023-12-13 19:00 |  |  |  | 2023-12-04 09:00 | 2023-12-13 19:00 | 6d |  |  | 30h |  | 205.85 | 205.85 |  | 7.X |
| 46 | 8.1 | Elaborar documento de Lecciones Aprendidas | manual | 1.5h | 2023-12-12 09:00 | 2023-12-12 10:30 | 31 |  |  | 2023-12-12 09:00 | 2023-12-12 10:30 | 1.5h | start no earlier than 2023-12-12 09:00 | Discord; GitHub; Director de proyecto; Python; Django; Portátiles | 9h |  | 61.76 | 61.76 |  | 7.0.1 |
| 47 | 8.2 | Elaborar Informe de Cierre | manual | 3.5h | 2023-12-12 09:00 | 2023-12-12 12:30 | 31 |  |  | 2023-12-12 09:00 | 2023-12-12 12:30 | 3.5h | start no earlier than 2023-12-12 09:00 | Discord; GitHub; Director de proyecto; Python; Django; Portátiles | 21h |  | 144.1 | 144.1 |  | 7.0.2 |
| 48 | 9 | **Instrucciones de despliegue del contenedor** |  | 6d? | 2023-12-04 09:00 | 2023-12-13 19:00 |  |  |  | 2023-12-04 09:00 | 2023-12-13 19:00 | 6d |  |  | 30h |  | 205.85 | 205.85 |  | 8.X |
| 49 | 9.1 | Elaborar documento de Instrucciones de despliegue del contenedor | manual | 3.5h | 2023-12-11 09:00 | 2023-12-11 12:30 | 41 |  |  | 2023-12-11 09:00 | 2023-12-11 12:30 | 3.5h | start no earlier than 2023-12-11 09:00 | Discord; GitHub; Director de proyecto; Python; Django; Portátiles | 21h |  | 144.1 | 144.1 |  | 8.0.1 |
| 50 | 9.2 | Elaborar un README con detalles de la aplicación | manual | 1.5h | 2023-12-11 09:00 | 2023-12-11 10:30 | 49 |  |  | 2023-12-11 09:00 | 2023-12-11 10:30 | 1.5h | start no earlier than 2023-12-11 09:00 | Discord; GitHub; Director de proyecto; Python; Django; Portátiles | 9h |  | 61.76 | 61.76 |  | 8.0.2 |
| 51 | 9.3 | Entrega de Informe de Cierre | milestone, manual | 0d | 2023-12-13 09:00 | 2023-12-13 09:00 |  |  |  |  |  |  |  |  |  |  |  |  |  |  |
| 52 | 9.4 | Entrega y presentación del proyecto | milestone, manual | 0d | 2023-12-14 09:00 | 2023-12-14 09:00 |  |  |  |  |  |  |  |  |  |  |  |  |  |  |
